# 项目进度计划

How a schedule from MS Project changed from version to version. A marks actual dates.

## Version 1 (saved 2024-04-07)

Note of the change: 里程碑进度：完整参数系统

| ID | WBS | Task | Duration | Start | Finish | Predecessors | Total float | Constraint |
| --- | --- | --- | --- | --- | --- | --- | --- | --- |
| 2 | 1 | **开发环境准备** | 10d? | 2024-04-08 | 2024-04-19 |  |  |  |
| 3 |  | 服务器准备 | 2d | 2024-04-08 | 2024-04-09 |  | 7d | finish no earlier than 2024-04-09 |
| 4 |  | 数据库准备 | 2d | 2024-04-08 | 2024-04-09 |  | 7d | finish no earlier than 2024-04-09 |
| 5 | 1.3 | **系统管理** | 1d? | 2024-04-09 | 2024-04-10 | 3, 4, 24 | 7d |  |
| 6 | 1.3.1 | **历史记录管理** | 0d | 2024-04-09 | 2024-04-09 |  | 8d |  |
| 7 |  | 备份系统 | 1d? | 2024-04-09 | 2024-04-10 |  |  |  |
| 8 |  | 日志记录 | 1d? | 2024-04-09 | 2024-04-10 |  |  |  |
| 9 |  | 服务器回滚 | 1d? | 2024-04-09 | 2024-04-10 |  |  |  |
| 10 |  | 应用运行情况管理 | 1d? | 2024-04-10 | 2024-04-10 |  | 7d |  |
| 11 | 1.3.3 | **硬件运行情况管理** | 0d | 2024-04-09 | 2024-04-09 |  | 8d |  |
| 12 |  | CPU运行检测 | 1d? | 2024-04-09 | 2024-04-10 |  |  |  |
| 13 |  | 内存运行检测 | 1d? | 2024-04-09 | 2024-04-10 |  |  |  |
| 14 |  | 其他硬件监测 | 1d? | 2024-04-09 | 2024-04-10 |  |  |  |
| 15 | 1.3.4 | **网络运行情况管理** | 0d | 2024-04-09 | 2024-04-09 |  | 8d |  |
| 16 |  | 前端网站连接维稳 | 1d? | 2024-04-10 | 2024-04-10 |  |  |  |
| 17 |  | 备份服务器连接维稳 | 1d? | 2024-04-10 | 2024-04-10 |  |  |  |
| 18 |  | 测试服务器连接维稳 | 1d? | 2024-04-10 | 2024-04-10 |  |  |  |
| 19 |  | 后端数据库连接维稳 | 1d? | 2024-04-10 | 2024-04-10 |  |  |  |
| 20 | 1.3.5 | **告警系统** | 0d | 2024-04-09 | 2024-04-09 |  | 8d |  |
| 21 |  | 警报启动 | 1d? | 2024-04-09 | 2024-04-10 |  |  |  |
| 22 |  | 警报解除 | 1d? | 2024-04-09 | 2024-04-10 |  |  |  |
| 24 | 1.4 | **前端视图准备** | 0d | 2024-04-08 | 2024-04-08 |  | 9d |  |
| 25 |  | 视图准备 | 1d? | 2024-04-08 | 2024-04-08 |  |  |  |
| 26 |  | 权限接口 | 1d? | 2024-04-08 | 2024-04-08 |  |  |  |
| 28 |  | 账号登录注册模块 | 1d? | 2024-04-08 | 2024-04-08 |  | 9d |  |
| 30 |  | 数据上报 | 1d? | 2024-04-07 | 2024-04-07 |  |  |  |
| 32 |  | 数据管理 | 1d? | 2024-04-07 | 2024-04-07 |  |  |  |
| 34 |  | 数据可视化 | 1d? | 2024-04-07 | 2024-04-07 |  |  |  |
| 36 |  | 通知模块 | 1d? | 2024-04-07 | 2024-04-07 |  |  |  |
| 38 | 7 | **验收** | 0d | 2024-04-07 | 2024-04-07 |  | 10d |  |
| 39 |  | 开发环境验收 | 1d? | 2024-04-07 | 2024-04-07 |  |  |  |
| 40 |  | 中央参数平台验收 | 1d? | 2024-04-07 | 2024-04-07 |  |  |  |
| 42 | 8 | **单元测试流** | 0d | 2024-04-07 | 2024-04-07 |  | 10d |  |
| 43 |  | 服务器稳定性测试 | 1d? | 2024-04-07 | 2024-04-07 |  |  |  |
| 44 |  | 回滚测试 | 1d? | 2024-04-07 | 2024-04-07 |  |  |  |
| 45 |  | 历史记录测试 | 1d? | 2024-04-07 | 2024-04-07 |  |  |  |
| 47 |  | 集成测试流 | 1d? | 2024-04-07 | 2024-04-07 |  |  |  |
| 49 |  | 系统测试 | 1d? | 2024-04-07 | 2024-04-07 |  |  |  |
| 51 |  | 实施 | 1d | 2024-04-07 | 2024-04-07 |  |  |  |

## Version 2 (saved 2024-04-07)

Note of the change: 项目计划初版

Last finish 2024-04-19 → 2024-06-07 (+49d).

Added:

| ID | Task | Duration | Start | Finish | Predecessors | Resources |
| --- | --- | --- | --- | --- | --- | --- |
| 10 | 运行情况监测 | 0.5d | 2024-04-10 | 2024-04-11 | 3, 12, 13, 14, 15, 16, 17, 18, 19, 20 | 郑俊烽; 冯韵涵; 李一柯 |
| 11 | 参数监测 | 0.5d | 2024-04-11 | 2024-04-11 | 10 | 郑俊烽; 冯韵涵; 李一柯 |
| 29 | **权限管理** | 5.9d | 2024-04-10 | 2024-04-17 |  |  |
| 30 | 用户管理 | 2.4d | 2024-04-12 | 2024-04-17 | 4, 31 | 邱子晴; 冯韵涵; 王正东; 备份数据库 |
| 31 | 角色管理 | 2d | 2024-04-10 | 2024-04-12 | 4 | 备份数据库; 李一柯; 彭炳桥 |
| 32 | **账号管理** | 6d? | 2024-04-22 | 2024-04-29 |  |  |
| 33 | 用户登录 | 1d | 2024-04-22 | 2024-04-22 | 2 | 李一柯; 宋瑜航 |
| 34 | 用户注册 | 1d | 2024-04-23 | 2024-04-23 | 33 | 李一柯; 宋瑜航; 备份数据库 |
| 35 | 账号验证 | 1d? | 2024-04-29 | 2024-04-29 | 33, 34, 63, 64 | 李一柯; 宋瑜航 |
| 38 | 企业备案 | 1d? | 2024-04-24 | 2024-04-24 | 2 | 李一柯; 宋瑜航 |
| 39 | 报表审核 | 2d? | 2024-04-25 | 2024-04-26 | 38 | 王正东; 彭炳桥 |
| 40 | 报表选择 | 1d? | 2024-04-29 | 2024-04-29 | 38, 39 | 冯韵涵; 邱子晴 |
| 41 | 数据上报 | 1d? | 2024-04-30 | 2024-04-30 | 40 | 王正东; 宋瑜航 |
| 43 | 报表管理 | 1d? | 2024-05-01 | 2024-05-01 | 37 | 李一柯 |
| 44 | 数据修改 | 1d? | 2024-05-02 | 2024-05-02 | 43 | 彭炳桥 |
| 45 | 数据删除 | 1d? | 2024-05-02 | 2024-05-02 | 43 | 王正东 |
| 46 | 数据还原 | 1d? | 2024-05-02 | 2024-05-02 | 43 | 宋瑜航 |
| 49 | 数据查询 | 1d? | 2024-05-06 | 2024-05-06 | 37, 42, 66, 67 | 李一柯; 彭炳桥 |
| 50 | 多维分析 | 8d | 2024-05-07 | 2024-05-16 | 49 | 冯韵涵; 李一柯; 邱子晴; 宋瑜航 |
| 51 | 数据导出 | 1d | 2024-05-17 | 2024-05-17 | 50 | 李一柯 |
| 54 | 时限验证 | 1d | 2024-05-20 | 2024-05-20 | 48 | 李一柯 |
| 55 | 通知发布 | 1d | 2024-05-21 | 2024-05-21 | 54 | 彭炳桥 |
| 56 | 通知发布 | 1d | 2024-05-22 | 2024-05-22 | 55 | 邱子晴 |
| 57 | 查看通知 | 1d | 2024-05-23 | 2024-05-23 | 56 | 宋瑜航 |
| 62 | 数据库权限测试 | 1d | 2024-04-17 | 2024-04-18 | 4, 29 | 乔凯星; 周扬; 主数据库; 测试服务器 |
| 63 | 数据库新增企业用户测试 | 1d | 2024-04-24 | 2024-04-24 | 34 | 金弋杰; 乔凯星; 周扬; 测试服务器; 主数据库 |
| 64 | 用户登录测试 | 1d | 2024-04-26 | 2024-04-26 | 33, 34 | 金弋杰; 乔凯星; 周扬; 测试服务器; 主数据库 |
| 65 | 用户视图测试 | 1d | 2024-05-02 | 2024-05-02 | 24, 25, 26, 28, 29, 30, 31, 32, 33, 34, 35 | 金弋杰; 乔凯星; 周扬 |
| 66 | 数据上传测试 | 1d | 2024-05-01 | 2024-05-01 | 37 | 金弋杰; 乔凯星 |
| 67 | 数据修改测试 | 1d | 2024-05-03 | 2024-05-03 | 37, 42, 66 | 金弋杰; 乔凯星; 周扬 |
| 68 | 数据可视化测试 | 1d | 2024-05-20 | 2024-05-20 | 48 | 周扬 |
| 69 | 通知模块测试 | 1d | 2024-05-24 | 2024-05-24 | 53 | 金弋杰 |
| 71 | 测试系统监测体系 | 2d | 2024-04-22 | 2024-04-23 | 2, 60, 61 | 金弋杰; 乔凯星; 周扬 |
| 72 | 注册登录体系 | 1d | 2024-04-30 | 2024-04-30 | 28, 29, 30, 31, 32, 33, 34, 35 | 金弋杰; 乔凯星; 周扬 |
| 73 | 数据管理体系 | 3d | 2024-05-20 | 2024-05-22 | 37, 42, 48 | 金弋杰; 乔凯星 |
| 74 | <新任务> | 1d? | 2024-04-22 | 2024-04-22 |  |  |

Removed: 9 服务器回滚; 38 验收; 39 开发环境验收; 40 中央参数平台验收; 44 回滚测试

Changed:

| ID | Task | Start | Finish | Duration | Total float | Predecessors | Other |
| --- | --- | --- | --- | --- | --- | --- | --- |
| 3 | 应用服务器初始化 |  |  |  | 7d → -3d |  | was named 服务器准备; resources 应用服务器; 备份服务器; 测试服务器 → 应用服务器; 备份服务器; 测试服务器; 李一柯; 冯韵涵 |
| 4 | 数据库初始化 |  |  |  | 7d → -3d |  | was named 数据库准备; resources 主数据库; 备份数据库 → 主数据库; 备份数据库; 邱子晴; 彭炳桥 |
| 5 | **系统管理** | 2024-04-09 → 2024-04-10 (+1d) | 2024-04-10 → 2024-04-16 (+6d) | 1d? → 5d? | 7d → -3d |  |  |
| 6 | **历史记录管理** | 2024-04-09 → 2024-04-11 (+2d) | 2024-04-09 → 2024-04-16 (+7d) | 0d → 3.1d? | 8d → -5d |  |  |
| 7 | 备份系统 | 2024-04-09 → 2024-04-11 (+2d) | 2024-04-10 → 2024-04-12 (+2d) |  | none → -4.9d | none → 9, 10, 11, 12, 13, 14, 15, 16, 17, 18, 19, 20 | resources none → 李一柯 |
| 8 | 日志记录 | 2024-04-09 → 2024-04-15 (+6d) | 2024-04-10 → 2024-04-16 (+6d) | 1d? → 2d | none → -5d | none → 3, 4, 7 | resources none → 李一柯 |
| 9 | **应用运行情况管理** |  | 2024-04-10 → 2024-04-11 (+1d) | 1d? → 1d | 7d → 0d |  |  |
| 12 | **硬件运行情况管理** | 2024-04-09 → 2024-04-10 (+1d) | 2024-04-09 → 2024-04-10 (+1d) | 0d → 0.9d | 8d → 0d | none → 3, 4 | resources 应用服务器 → none |
| 13 | CPU运行检测 | 2024-04-09 → 2024-04-10 (+1d) |  | 1d? → 0.3d |  | none → 3, 4 | resources none → 备份服务器; 备份数据库; 应用服务器; 主数据库; 彭炳桥 |
| 14 | 内存运行检测 | 2024-04-09 → 2024-04-10 (+1d) |  | 1d? → 0.3d |  | none → 13 | resources none → 备份服务器; 备份数据库; 应用服务器; 主数据库; 彭炳桥 |
| 15 | 其他硬件监测 | 2024-04-09 → 2024-04-10 (+1d) |  | 1d? → 0.3d |  | none → 14 | resources none → 备份服务器; 备份数据库; 应用服务器; 主数据库; 彭炳桥 |
| 16 | **网络运行情况管理** | 2024-04-09 → 2024-04-10 (+1d) | 2024-04-09 → 2024-04-10 (+1d) | 0d → 0.5d | 8d → 0d |  |  |
| 17 | 前端网站连接维稳 |  |  | 1d? → 0.25d |  | none → 3, 24, 25, 26 | resources none → 李一柯; 宋瑜航 |
| 18 | 备份服务器连接维稳 |  |  | 1d? → 0.25d |  | none → 3, 17 | resources none → 李一柯; 宋瑜航 |
| 19 | 测试服务器连接维稳 |  |  | 1d? → 0.25d |  | none → 3 | resources none → 冯韵涵 |
| 20 | 后端数据库连接维稳 |  |  | 1d? → 0.25d |  | none → 4, 17 | resources none → 邱子晴; 王正东 |
| 21 | **告警系统** | 2024-04-09 → 2024-04-11 (+2d) | 2024-04-09 → 2024-04-16 (+7d) | 0d → 3d | 8d → 0d |  |  |
| 22 | 警报启动 | 2024-04-09 → 2024-04-11 (+2d) | 2024-04-10 → 2024-04-12 (+2d) | 1d? → 1d |  | none → 3, 4, 9, 12, 13, 14, 15, 16, 17, 18, 19, 20 | resources none → 冯韵涵; 王正东; 邱子晴; 彭炳桥; 宋瑜航 |
| 23 | 警报解除 | 2024-04-09 → 2024-04-12 (+3d) | 2024-04-10 → 2024-04-16 (+6d) | 1d? → 2d |  | none → 22 | resources none → 彭炳桥; 邱子晴; 王正东; 宋瑜航 |
| 24 | **前端视图准备** |  | 2024-04-08 → 2024-04-09 (+1d) | 0d → 2d? | 9d → -3d |  |  |
| 25 | 用户视图 |  |  |  | none → -3d |  | was named 视图准备; resources none → 郑俊烽; 宋瑜航 |
| 26 | 权限接口 | 2024-04-08 → 2024-04-09 (+1d) | 2024-04-08 → 2024-04-09 (+1d) |  | none → -3d | none → 25 | resources none → 郑俊烽; 宋瑜航 |
| 28 | **账号登录注册模块** | 2024-04-08 → 2024-04-10 (+2d) | 2024-04-08 → 2024-04-29 (+21d) | 1d? → 14d? | 9d → 0d | none → 2, 5 |  |
| 37 | **数据上报** | 2024-04-07 → 2024-04-24 (+17d) | 2024-04-07 → 2024-04-30 (+23d) | 1d? → 5d? | none → 0d |  |  |
| 42 | **数据管理** | 2024-04-07 → 2024-05-01 (+24d) | 2024-04-07 → 2024-05-02 (+25d) | 1d? → 2d? | none → 0d |  |  |
| 48 | **数据可视化** | 2024-04-07 → 2024-05-06 (+29d) | 2024-04-07 → 2024-05-17 (+40d) | 1d? → 10d? | none → 0d |  |  |
| 53 | **通知模块** | 2024-04-07 → 2024-05-20 (+43d) | 2024-04-07 → 2024-05-23 (+46d) | 1d? → 4d | none → 0d |  |  |
| 59 | **单元测试流** | 2024-04-07 → 2024-04-11 (+4d) | 2024-04-07 → 2024-05-24 (+47d) | 0d → 31.1d | 10d → 0d |  |  |
| 60 | 服务器稳定性测试 | 2024-04-07 → 2024-04-11 (+4d) | 2024-04-07 → 2024-04-15 (+8d) | 1d? → 2d | none → 29.1d | none → 3, 9, 12, 13, 14, 15, 16, 17, 18, 19, 20 | resources none → 金弋杰; 乔凯星; 周扬; 测试服务器; 应用服务器 |
| 61 | 历史记录测试 | 2024-04-07 → 2024-04-17 (+10d) | 2024-04-07 → 2024-04-18 (+11d) | 1d? → 2d | none → 26d | none → 3, 4, 6, 7, 8, 9, 10, 11, 12, 13, 14, 15, 16, 17, 18, 19, 20, 21, 22, 23 | resources none → 金弋杰; 备份数据库 |
| 70 | **集成测试流** | 2024-04-07 → 2024-04-22 (+15d) | 2024-04-07 → 2024-05-22 (+45d) | 1d? → 23d | none → 6d |  |  |
| 75 | 系统测试 | 2024-04-07 → 2024-05-27 (+50d) | 2024-04-07 → 2024-06-05 (+59d) | 1d? → 8d |  | none → 42, 48, 53, 59 | resources none → 金弋杰; 乔凯星; 周扬 |
| 77 | 实施 | 2024-04-07 → 2024-06-06 (+60d) | 2024-04-07 → 2024-06-07 (+61d) | 1d → 2d |  | none → 75 |  |

## Version 3 (saved 2024-04-07)

Note of the change: 项目计划再版

Last finish stays 2024-06-07. Complete tasks 0 → 2.

Added:

| ID | Task | Duration | Start | Finish | Predecessors | Resources |
| --- | --- | --- | --- | --- | --- | --- |
| 70 | 通知体系 | 1d | 2024-05-27 | 2024-05-27 | 64 | 金弋杰 |

Changed:

| ID | Task | Start | Finish | Duration | Complete | Total float | Predecessors | Other |
| --- | --- | --- | --- | --- | --- | --- | --- | --- |
| 2 | **开发环境准备** | 2024-04-08 A |  |  | 0% → 27% |  |  | baseline start none → 2024-04-08; baseline finish none → 2024-04-19 |
| 3 | 服务器初始化 | 2024-04-08 A | 2024-04-09 A |  | 0% → 100% | -3d → none |  | was named 应用服务器初始化; baseline start none → 2024-04-08; baseline finish none → 2024-04-09 |
| 4 | 数据库初始化 | 2024-04-08 → 2024-04-09 A (+1d) | 2024-04-09 A | 2d → 1d | 0% → 100% | -3d → none |  | baseline start none → 2024-04-08; baseline finish none → 2024-04-09 |
| 5 | **系统管理** | 2024-04-10 A |  |  | 0% → 8% | -3d → -0.1d |  | baseline start none → 2024-04-10; baseline finish none → 2024-04-16 |
| 6 | **历史记录管理** | 2024-04-11 A |  |  | 0% → 25% | -5d → -2.1d |  | baseline start none → 2024-04-11; baseline finish none → 2024-04-16 |
| 7 | 备份系统 | 2024-04-11 A |  |  | 0% → 75% |  |  | baseline start none → 2024-04-11; baseline finish none → 2024-04-12 |
| 8 | 日志记录 |  |  |  |  |  |  | baseline start none → 2024-04-15; baseline finish none → 2024-04-16 |
| 9 | **应用运行情况管理** |  |  |  |  |  |  | baseline start none → 2024-04-10; baseline finish none → 2024-04-11 |
| 10 | 运行情况监测 |  |  |  |  |  |  | baseline start none → 2024-04-10; baseline finish none → 2024-04-11 |
| 11 | 参数监测 |  |  |  |  |  |  | baseline start none → 2024-04-11; baseline finish none → 2024-04-11 |
| 12 | **硬件运行情况管理** |  |  |  |  |  |  | baseline start none → 2024-04-10; baseline finish none → 2024-04-10 |
| 13 | CPU运行检测 |  |  |  |  |  |  | baseline start none → 2024-04-10; baseline finish none → 2024-04-10 |
| 14 | 内存运行检测 |  |  |  |  |  |  | baseline start none → 2024-04-10; baseline finish none → 2024-04-10 |
| 15 | 其他硬件监测 |  |  |  |  |  |  | baseline start none → 2024-04-10; baseline finish none → 2024-04-10 |
| 16 | **网络运行情况管理** |  |  |  |  |  |  | baseline start none → 2024-04-10; baseline finish none → 2024-04-10 |
| 17 | 前端网站连接维稳 |  |  |  |  |  |  | baseline start none → 2024-04-10; baseline finish none → 2024-04-10 |
| 18 | 备份服务器连接维稳 |  |  |  |  |  |  | baseline start none → 2024-04-10; baseline finish none → 2024-04-10 |
| 19 | 测试服务器连接维稳 |  |  |  |  |  |  | baseline start none → 2024-04-10; baseline finish none → 2024-04-10 |
| 20 | 后端数据库连接维稳 |  |  |  |  |  |  | baseline start none → 2024-04-10; baseline finish none → 2024-04-10 |
| 21 | **告警系统** |  |  |  |  |  |  | baseline start none → 2024-04-11; baseline finish none → 2024-04-16 |
| 22 | 警报启动 |  |  |  |  |  |  | baseline start none → 2024-04-11; baseline finish none → 2024-04-12 |
| 23 | 警报解除 |  |  |  |  |  |  | baseline start none → 2024-04-12; baseline finish none → 2024-04-16 |
| 24 | **前端视图准备** |  |  |  |  | -3d → -2d |  | baseline start none → 2024-04-08; baseline finish none → 2024-04-09 |
| 25 | 用户视图 |  |  |  |  | -3d → -2d |  | baseline start none → 2024-04-08; baseline finish none → 2024-04-08 |
| 26 | 权限接口 |  |  |  |  | -3d → -2d |  | baseline start none → 2024-04-09; baseline finish none → 2024-04-09 |
| 27 | **账号登录注册模块** |  |  |  |  |  |  | baseline start none → 2024-04-10; baseline finish none → 2024-04-29 |
| 28 | **权限管理** |  |  |  |  |  |  | baseline start none → 2024-04-10; baseline finish none → 2024-04-17 |
| 29 | 用户管理 |  |  |  |  |  |  | baseline start none → 2024-04-12; baseline finish none → 2024-04-17 |
| 30 | 角色管理 |  |  | 2d → 1.4d |  |  |  | resources 备份数据库; 李一柯; 彭炳桥 → 李一柯; 彭炳桥; baseline start none → 2024-04-10; baseline finish none → 2024-04-12 |
| 31 | **账号管理** |  |  |  |  | 16d → 19d |  | baseline start none → 2024-04-22; baseline finish none → 2024-04-29 |
| 32 | 用户登录 |  |  |  |  | 18d → 19d |  | baseline start none → 2024-04-22; baseline finish none → 2024-04-22 |
| 33 | 用户注册 |  |  |  |  | 18d → 19d |  | resources 李一柯; 宋瑜航; 备份数据库 → 李一柯; 宋瑜航; baseline start none → 2024-04-23; baseline finish none → 2024-04-23 |
| 34 | 账号验证 |  |  |  |  | 16d → 19d |  | baseline start none → 2024-04-29; baseline finish none → 2024-04-29 |
| 35 | **数据上报** |  |  |  |  | 0d → 1d |  | baseline start none → 2024-04-24; baseline finish none → 2024-04-30 |
| 36 | 企业备案 |  |  |  |  | 0d → 1d |  | baseline start none → 2024-04-24; baseline finish none → 2024-04-24 |
| 37 | 报表审核 |  |  |  |  | 0d → 1d |  | baseline start none → 2024-04-25; baseline finish none → 2024-04-26 |
| 38 | 报表选择 |  |  |  |  | 0d → 1d |  | baseline start none → 2024-04-29; baseline finish none → 2024-04-29 |
| 39 | 数据上报 |  |  |  |  | 0d → 1d |  | baseline start none → 2024-04-30; baseline finish none → 2024-04-30 |
| 40 | **数据管理** |  |  |  |  | 0d → 1d |  | baseline start none → 2024-05-01; baseline finish none → 2024-05-02 |
| 41 | 报表管理 |  |  |  |  | 0d → 1d |  | baseline start none → 2024-05-01; baseline finish none → 2024-05-01 |
| 42 | 数据修改 |  |  |  |  | 0d → 1d |  | baseline start none → 2024-05-02; baseline finish none → 2024-05-02 |
| 43 | 数据删除 |  |  |  |  | 0d → 1d |  | baseline start none → 2024-05-02; baseline finish none → 2024-05-02 |
| 44 | 数据还原 |  |  |  |  | 0d → 1d |  | baseline start none → 2024-05-02; baseline finish none → 2024-05-02 |
| 45 | **数据可视化** |  |  |  |  | 0d → 1d |  | baseline start none → 2024-05-06; baseline finish none → 2024-05-17 |
| 46 | 数据查询 |  |  |  |  | 0d → 1d |  | baseline start none → 2024-05-06; baseline finish none → 2024-05-06 |
| 47 | 多维分析 |  |  |  |  | 0d → 1d |  | baseline start none → 2024-05-07; baseline finish none → 2024-05-16 |
| 48 | 数据导出 |  |  |  |  | 0d → 1d |  | baseline start none → 2024-05-17; baseline finish none → 2024-05-17 |
| 49 | **通知模块** |  |  |  |  | 0d → 1d |  | baseline start none → 2024-05-20; baseline finish none → 2024-05-23 |
| 50 | 时限验证 |  |  |  |  | 0d → 1d |  | baseline start none → 2024-05-20; baseline finish none → 2024-05-20 |
| 51 | 通知发布 |  |  |  |  | 0d → 1d |  | baseline start none → 2024-05-21; baseline finish none → 2024-05-21 |
| 52 | 通知发布 |  |  |  |  | 0d → 1d |  | baseline start none → 2024-05-22; baseline finish none → 2024-05-22 |
| 53 | 查看通知 |  |  |  |  | 0d → 1d |  | baseline start none → 2024-05-23; baseline finish none → 2024-05-23 |
| 54 | **单元测试流** |  |  |  |  | 0d → 1d |  | baseline start none → 2024-04-11; baseline finish none → 2024-05-24 |
| 55 | 服务器稳定性测试 |  |  |  |  | 29.1d → 30.1d |  | baseline start none → 2024-04-11; baseline finish none → 2024-04-15 |
| 56 | 历史记录测试 |  |  |  |  | 26d → 27d |  | baseline start none → 2024-04-17; baseline finish none → 2024-04-18 |
| 57 | 数据库权限测试 |  |  |  |  | 26.1d → 27.1d |  | baseline start none → 2024-04-17; baseline finish none → 2024-04-18 |
| 58 | 数据库新增企业用户测试 |  |  |  |  | 18d → 21d |  | baseline start none → 2024-04-24; baseline finish none → 2024-04-24 |
| 59 | 用户登录测试 |  |  |  |  | 16d → 19d |  | baseline start none → 2024-04-26; baseline finish none → 2024-04-26 |
| 60 | 用户视图测试 |  |  |  |  | 16d → 17d |  | baseline start none → 2024-05-02; baseline finish none → 2024-05-02 |
| 61 | 数据上传测试 |  |  |  |  | 1d → 2d |  | baseline start none → 2024-05-01; baseline finish none → 2024-05-01 |
| 62 | 数据修改测试 |  |  |  |  | 0d → 1d |  | baseline start none → 2024-05-03; baseline finish none → 2024-05-03 |
| 63 | 数据可视化测试 |  |  |  |  | none → 5d |  | baseline start none → 2024-05-20; baseline finish none → 2024-05-20 |
| 64 | 通知模块测试 |  |  |  |  | none → 1d |  | baseline start none → 2024-05-24; baseline finish none → 2024-05-24 |
| 65 | **集成测试流** |  | 2024-05-22 → 2024-05-27 (+5d) | 23d → 26d |  | 6d → 9d |  | baseline start none → 2024-04-22; baseline finish none → 2024-05-22 |
| 66 | 测试系统监测体系 |  |  |  |  |  |  | baseline start none → 2024-04-22; baseline finish none → 2024-04-23 |
| 67 | 注册登录体系 |  |  |  |  | none → 28d |  | baseline start none → 2024-04-30; baseline finish none → 2024-04-30 |
| 68 | 数据管理体系 |  |  |  |  | none → 12d |  | baseline start none → 2024-05-20; baseline finish none → 2024-05-22 |
| 69 | 数据可视化体系 | 2024-04-22 → 2024-05-24 (+32d) | 2024-04-22 → 2024-05-24 (+32d) | 1d? → 1d |  |  | none → 45 | was named <新任务>; resources none → 周扬; baseline start none → 2024-04-22; baseline finish none → 2024-04-22 |
| 71 | 系统测试 | 2024-05-27 → 2024-05-28 (+1d) |  | 8d → 7d |  | none → 0d |  | constraint none → start no earlier than 2024-05-28; baseline start none → 2024-05-27; baseline finish none → 2024-06-05 |
| 73 | 实施 |  |  |  |  |  |  | resources none → 廖文远; baseline start none → 2024-06-06; baseline finish none → 2024-06-07 |

## Version 4 (saved 2024-04-08)

Note of the change: 项目计划一版终稿

Last finish stays 2024-06-07.

Added:

| ID | Task | Duration | Start | Finish | Predecessors | Resources |
| --- | --- | --- | --- | --- | --- | --- |
| 55 | 服务器测试环境准备 | 2d | 2024-04-09 | 2024-04-10 |  | 金弋杰 |
| 57 | 历史记录测试准备 | 2d | 2024-04-17 | 2024-04-18 | 6, 7, 8, 10 | 金弋杰 |
| 77 | 服务器运行 | 43d | 2024-04-10 | 2024-06-07 | 3 | 备份服务器; 测试服务器; 应用服务器 |
| 78 | 数据库运行 | 44d | 2024-04-09 | 2024-06-07 | 4 | 备份数据库; 主数据库 |

Changed:

| ID | Task | Start | Finish | Duration | Complete | Total float | Predecessors | Other |
| --- | --- | --- | --- | --- | --- | --- | --- | --- |
| 2 | **开发环境准备** |  |  |  | 27% → 33% |  |  |  |
| 3 | 服务器初始化 |  |  |  |  |  |  | resources 应用服务器; 备份服务器; 测试服务器; 李一柯; 冯韵涵 → 李一柯; 冯韵涵; 彭炳桥 |
| 4 | 数据库初始化 | 2024-04-09 A → 2024-04-08 A (-1d) | 2024-04-09 A → 2024-04-08 A (-1d) |  |  |  |  | resources 主数据库; 备份数据库; 邱子晴; 彭炳桥 → 邱子晴; 彭炳桥; 王正东 |
| 5 | **系统管理** |  | 2024-04-16 → 2024-04-15 (-1d) | 5d? → 4d? | 8% → 12% | -0.1d → 0d |  |  |
| 6 | **历史记录管理** |  | 2024-04-16 → 2024-04-15 (-1d) | 3.1d? → 1.5d? | 25% → 50% | -2.1d → -0.5d |  |  |
| 8 | 日志记录 | 2024-04-15 → 2024-04-12 (-3d) | 2024-04-16 → 2024-04-15 (-1d) | 2d → 0.5d |  | -5d → -3.4d |  | constraint none → finish no earlier than 2024-04-12 |
| 11 | 参数监测 |  |  |  |  |  | 10 → 10, 12, 16 |  |
| 13 | CPU运行检测 |  |  |  |  |  |  | resources 备份服务器; 备份数据库; 应用服务器; 主数据库; 彭炳桥 → 彭炳桥 |
| 14 | 内存运行检测 |  |  |  |  |  |  | resources 备份服务器; 备份数据库; 应用服务器; 主数据库; 彭炳桥 → 彭炳桥 |
| 15 | 其他硬件监测 |  |  |  |  |  |  | resources 备份服务器; 备份数据库; 应用服务器; 主数据库; 彭炳桥 → 彭炳桥 |
| 21 | **告警系统** |  | 2024-04-16 → 2024-04-15 (-1d) | 3d → 2.1d |  |  |  |  |
| 23 | 警报解除 |  | 2024-04-16 → 2024-04-15 (-1d) | 2d → 1.1d |  |  |  |  |
| 27 | **账号登录注册模块** |  | 2024-04-29 → 2024-04-25 (-4d) | 14d? → 12d |  |  |  |  |
| 28 | **权限管理** |  | 2024-04-17 → 2024-04-15 (-2d) | 5.9d → 4d |  |  |  |  |
| 29 | 用户管理 |  | 2024-04-17 → 2024-04-15 (-2d) | 2.4d → 0d |  |  |  | constraint none → start no earlier than 2024-04-12; resources 邱子晴; 冯韵涵; 王正东; 备份数据库 → 邱子晴 |
| 30 | 角色管理 |  |  | 1.4d → 2d |  |  |  |  |
| 31 | **账号管理** | 2024-04-22 → 2024-04-16 (-6d) | 2024-04-29 → 2024-04-25 (-4d) | 6d? → 8d |  | 19d → 0d |  |  |
| 32 | 用户登录 | 2024-04-22 → 2024-04-16 (-6d) | 2024-04-22 → 2024-04-18 (-4d) | 1d → 3d |  | 19d → none |  |  |
| 33 | 用户注册 | 2024-04-23 → 2024-04-19 (-4d) | 2024-04-23 → 2024-04-22 (-1d) | 1d → 2d |  | 19d → none |  |  |
| 34 | 账号验证 | 2024-04-29 → 2024-04-23 (-6d) | 2024-04-29 → 2024-04-25 (-4d) | 1d? → 3d |  | 19d → none |  | resources 李一柯; 宋瑜航 → 宋瑜航 |
| 36 | 企业备案 |  |  |  |  | 1d → 0d |  | resources 李一柯; 宋瑜航 → 郑俊烽 |
| 40 | **数据管理** |  | 2024-05-02 → 2024-05-06 (+4d) | 2d? → 4d? |  | 1d → 0d |  |  |
| 41 | 报表管理 |  | 2024-05-01 → 2024-05-03 (+2d) | 1d? → 3d |  | 1d → 0d |  |  |
| 42 | 数据修改 | 2024-05-02 → 2024-05-06 (+4d) | 2024-05-02 → 2024-05-06 (+4d) | 1d? → 1d |  | 1d → 0d |  |  |
| 43 | 数据删除 | 2024-05-02 → 2024-05-06 (+4d) | 2024-05-02 → 2024-05-06 (+4d) |  |  | 1d → 0d |  |  |
| 44 | 数据还原 | 2024-05-02 → 2024-05-06 (+4d) | 2024-05-02 → 2024-05-06 (+4d) |  |  | 1d → 0d |  |  |
| 45 | **数据可视化** | 2024-05-06 → 2024-05-08 (+2d) | 2024-05-17 → 2024-05-21 (+4d) |  |  | 1d → 0d |  |  |
| 46 | 数据查询 | 2024-05-06 → 2024-05-08 (+2d) | 2024-05-06 → 2024-05-08 (+2d) |  |  | 1d → 0d |  |  |
| 47 | 多维分析 | 2024-05-07 → 2024-05-09 (+2d) | 2024-05-16 → 2024-05-20 (+4d) |  |  | 1d → 0d |  |  |
| 48 | 数据导出 | 2024-05-17 → 2024-05-21 (+4d) | 2024-05-17 → 2024-05-21 (+4d) |  |  | 1d → 0d |  |  |
| 49 | **通知模块** | 2024-05-20 → 2024-05-22 (+2d) | 2024-05-23 → 2024-05-27 (+4d) |  |  | 1d → 0d |  |  |
| 50 | 时限验证 | 2024-05-20 → 2024-05-22 (+2d) | 2024-05-20 → 2024-05-22 (+2d) |  |  | 1d → 0d |  |  |
| 51 | 通知发布 | 2024-05-21 → 2024-05-23 (+2d) | 2024-05-21 → 2024-05-23 (+2d) |  |  | 1d → 0d |  |  |
| 52 | 通知发布 | 2024-05-22 → 2024-05-24 (+2d) | 2024-05-22 → 2024-05-24 (+2d) |  |  | 1d → 0d |  |  |
| 53 | 查看通知 | 2024-05-23 → 2024-05-27 (+4d) | 2024-05-23 → 2024-05-27 (+4d) |  |  | 1d → 0d |  |  |
| 54 | **单元测试流** | 2024-04-11 → 2024-04-09 (-2d) | 2024-05-24 → 2024-05-28 (+4d) | 31.1d → 36d |  | 1d → 0d |  |  |
| 56 | 服务器稳定性测试 |  |  |  |  |  | 3, 9, 12, 13, 14, 15, 16, 17, 18, 19, 20 → 3, 9, 12, 13, 14, 15, 16, 17, 18, 19, 20, 55 | resources 金弋杰; 乔凯星; 周扬; 测试服务器; 应用服务器 → 金弋杰; 乔凯星; 周扬 |
| 58 | 历史记录测试 | 2024-04-17 → 2024-04-16 (-1d) | 2024-04-18 → 2024-04-17 (-1d) |  |  | 27d → 28d |  | resources 金弋杰; 备份数据库 → 周扬 |
| 59 | 数据库权限测试 | 2024-04-17 → 2024-04-16 (-1d) | 2024-04-18 → 2024-04-16 (-2d) |  |  | 27.1d → 31d |  | resources 乔凯星; 周扬; 主数据库; 测试服务器 → 乔凯星 |
| 60 | 数据库新增企业用户测试 | 2024-04-24 → 2024-04-23 (-1d) |  |  |  | 21d → 19d |  | resources 金弋杰; 乔凯星; 周扬; 测试服务器; 主数据库 → 金弋杰; 乔凯星; 周扬 |
| 61 | 用户登录测试 | 2024-04-26 → 2024-04-25 (-1d) | 2024-04-26 → 2024-04-25 (-1d) |  |  | 19d → 18d |  | resources 金弋杰; 乔凯星; 周扬; 测试服务器; 主数据库 → 金弋杰; 乔凯星; 周扬 |
| 62 | 用户视图测试 | 2024-05-02 → 2024-04-29 (-3d) | 2024-05-02 → 2024-04-29 (-3d) |  |  | 17d → 22d |  |  |
| 64 | 数据修改测试 | 2024-05-03 → 2024-05-07 (+4d) | 2024-05-03 → 2024-05-07 (+4d) |  |  | 1d → 0d |  |  |
| 65 | 数据可视化测试 | 2024-05-20 → 2024-05-22 (+2d) | 2024-05-20 → 2024-05-22 (+2d) |  |  |  |  |  |
| 66 | 通知模块测试 | 2024-05-24 → 2024-05-28 (+4d) | 2024-05-24 → 2024-05-28 (+4d) |  |  | 1d → 0d |  |  |
| 69 | 注册登录体系 | 2024-04-30 → 2024-04-26 (-4d) | 2024-04-30 → 2024-04-26 (-4d) |  |  | 28d → 23d |  | resources 金弋杰; 乔凯星; 周扬 → 乔凯星; 周扬 |
| 70 | 数据管理体系 | 2024-05-20 → 2024-05-22 (+2d) | 2024-05-22 → 2024-05-24 (+2d) |  |  | 12d → 3d |  |  |
| 73 | 系统测试 | 2024-05-28 → 2024-05-29 (+1d) | 2024-06-05 → 2024-06-04 (-1d) | 7d → 5d |  | 0d → 1d | 40, 45, 49, 54 → 40, 45, 49, 54, 67, 68 |  |
| 75 | 实施 |  |  |  |  |  |  | resources 廖文远 → 廖文远; 冯韵涵; 金弋杰; 李一柯; 彭炳桥; 乔凯星; 邱子晴; 宋瑜航; 王正东; 郑俊烽; 周扬 |
